Schedule from MS Project, 2018-09-19 to 2018-12-13, costs in ¥.
Microsoft

## Calendars

- 标准: Mon-Fri 08:00-12:00, 13:00-17:00; Sat-Sun 08:00-21:00.

## Resources

| Resource | Rate |
| --- | --- |
| 蔡峰 | 28 |
| 黄为波 | 28 |
| 江亮儒 | 28 |
| 苏雨豪 | 28 |
| 陈子卿 | 28 |

## Schedule

| ID | WBS | Task | Type | Duration | Start | Finish | Baseline start | Baseline finish | Baseline duration | Total slack | Resources | Work | Cost |
| --- | --- | --- | --- | --- | --- | --- | --- | --- | --- | --- | --- | --- | --- |
| 1 | 1 | **需求工程项目准备** |  | 59.75d | 2018-09-19 09:00 | 2018-11-08 18:00 | 2018-09-19 09:00 | 2018-11-08 18:00 | 59.75d |  |  | 712h | 19,936 |
| 2 | 1.1 | 确定分组成员 | manual | 1h | 2018-09-19 09:00 | 2018-09-19 10:00 | 2018-09-19 09:00 | 2018-09-19 10:00 | 1h |  | 蔡峰; 陈子卿; 黄为波; 江亮儒; 苏雨豪 | 5h | 140 |
| 3 | 1.2 | 课题选定 | manual | 2d | 2018-09-19 09:00 | 2018-09-20 18:00 | 2018-09-19 09:00 | 2018-09-20 18:00 | 2d |  |  |  |  |
| 4 | 1.3 | 第一次会议 | manual | 1h | 2018-09-21 09:00 | 2018-09-21 10:00 | 2018-09-21 09:00 | 2018-09-21 10:00 | 1h |  | 蔡峰; 陈子卿; 黄为波; 江亮儒; 苏雨豪 | 5h | 140 |
| 5 | 1.4 | 统一开发工具 |  | 1d | 2018-09-19 09:00 | 2018-09-20 09:00 | 2018-09-19 09:00 | 2018-09-20 09:00 | 1d | 99.88d | 蔡峰; 陈子卿; 黄为波; 江亮儒; 苏雨豪 | 40h | 1,120 |
| 6 | 1.5 | 确定小组成员职责 | manual | 1d | 2018-09-26 09:00 | 2018-09-27 09:00 | 2018-09-26 09:00 | 2018-09-27 09:00 | 1d |  | 蔡峰; 陈子卿; 黄为波; 江亮儒; 苏雨豪 | 40h | 1,120 |
| 7 | 1.6 | **需求工程项目计划** |  | 50.5d | 2018-09-26 09:00 | 2018-11-07 18:00 | 2018-09-26 09:00 | 2018-11-07 18:00 | 50.5d |  |  | 622h | 17,416 |
| 8 | 1.6.1 | 第2次会议 | manual | 1h | 2018-09-27 09:00 | 2018-09-27 10:00 | 2018-09-27 09:00 | 2018-09-27 10:00 | 1h |  | 蔡峰; 陈子卿; 黄为波; 江亮儒; 苏雨豪 | 5h | 140 |
| 9 | 1.6.2 | 人力资源管理计划 | manual | 3h | 2018-09-28 09:00 | 2018-09-28 12:00 | 2018-09-28 09:00 | 2018-09-28 12:00 | 3h |  | 蔡峰 | 3h | 84 |
| 10 | 1.6.3 | 成本管理计划 | manual | 3h | 2018-09-28 09:00 | 2018-09-28 12:00 | 2018-09-28 09:00 | 2018-09-28 12:00 | 3h |  | 陈子卿 | 3h | 84 |
| 11 | 1.6.4 | 沟通管理计划 | manual | 3h | 2018-09-28 09:00 | 2018-09-28 12:00 | 2018-09-28 09:00 | 2018-09-28 12:00 | 3h |  | 苏雨豪 | 3h | 84 |
| 12 | 1.6.5 | 风险管理计划 | manual | 3h | 2018-09-28 09:00 | 2018-09-28 12:00 | 2018-09-28 09:00 | 2018-09-28 12:00 | 3h |  | 陈子卿 | 3h | 84 |
| 13 | 1.6.6 | 需求工程项目计划书 |  | 5h | 2018-09-27 09:00 | 2018-09-27 15:00 | 2018-09-27 09:00 | 2018-09-27 15:00 | 5h | 91d | 蔡峰; 陈子卿; 黄为波; 江亮儒; 苏雨豪 | 25h | 700 |
| 14 | 1.6.7 | UML概述PPT（翻转） | manual | 3d | 2018-10-13 09:00 | 2018-10-14 20:00 | 2018-10-08 09:00 | 2018-10-14 18:00 | 7.75d |  | 蔡峰; 陈子卿; 江亮儒; 苏雨豪 | 96h | 2,688 |
| 15 | 1.6.8 | 第3次会议 | manual | 1h | 2018-10-12 09:00 | 2018-10-12 10:00 |  |  |  |  |  |  |  |
| 16 | 1.6.9 | 需求计划的修改与更新 | manual | 1h | 2018-10-12 09:00 | 2018-10-12 10:00 |  |  |  |  | 黄为波 | 1h | 28 |
| 17 | 1.6.10 | 可行性分析报告的修改 | manual | 3h | 2018-10-13 09:00 | 2018-10-13 12:00 |  |  |  |  | 黄为波 | 3h | 84 |
| 18 | 1.6.11 | UML工具学习 | manual | 7d | 2018-10-17 09:00 | 2018-10-22 16:00 | 2018-10-17 09:00 | 2018-10-22 16:00 | 7d |  | 蔡峰; 陈子卿; 黄为波; 江亮儒; 苏雨豪 | 280h | 7,840 |
| 19 | 1.6.12 | 第4次会议 | manual | 1h | 2018-10-19 09:00 | 2018-10-19 10:00 |  |  |  |  |  |  |  |
| 20 | 1.6.13 | UML建模基础学习 | manual | 5d | 2018-10-26 09:00 | 2018-10-29 16:00 | 2018-10-26 09:00 | 2018-10-29 16:00 | 5d |  | 蔡峰; 陈子卿; 黄为波; 江亮儒; 苏雨豪 | 200h | 5,600 |
| 21 | 2 | **需求开发阶段** |  | 44.38d | 2018-11-01 09:00 | 2018-12-08 18:00 | 2018-11-01 09:00 | 2018-12-08 18:00 | 44.38d |  |  | 331.5h | 9,282 |
| 22 | 2.1 | **需求获取** |  | 10.88d | 2018-11-05 09:00 | 2018-11-14 15:00 | 2018-11-05 09:00 | 2018-11-14 15:00 | 10.88d | 0d |  | 88h | 2,464 |
| 23 | 2.1.1 | 用户群分类 | manual | 2h | 2018-11-08 09:00 | 2018-11-08 11:00 | 2018-11-08 09:00 | 2018-11-08 11:00 | 2h |  | 蔡峰 | 2h | 56 |
| 24 | 2.1.2 | 定义愿景和范围 | manual | 3h | 2018-11-08 09:00 | 2018-11-08 12:00 | 2018-11-08 09:00 | 2018-11-08 12:00 | 3h |  | 黄为波; 陈子卿 | 6h | 168 |
| 25 | 2.1.3 | 初步制定功能点列表 | manual | 3h | 2018-11-08 09:00 | 2018-11-08 12:00 | 2018-11-08 09:00 | 2018-11-08 12:00 | 3h |  | 江亮儒; 苏雨豪 | 6h | 168 |
| 26 | 2.1.4 | 选择产品代表 | manual | 1h | 2018-11-08 09:00 | 2018-11-08 10:00 | 2018-11-08 09:00 | 2018-11-08 10:00 | 1h |  | 蔡峰; 陈子卿; 黄为波; 江亮儒; 苏雨豪 | 5h | 140 |
| 27 | 2.1.5 | 建立核心队伍 | manual | 1h | 2018-11-08 09:00 | 2018-11-08 10:00 | 2018-11-08 09:00 | 2018-11-08 10:00 | 1h |  | 蔡峰; 陈子卿; 黄为波; 江亮儒; 苏雨豪 | 5h | 140 |
| 28 | 2.1.6 | 第4次会议 | manual | 2h | 2018-11-05 09:00 | 2018-11-05 11:00 | 2018-11-05 09:00 | 2018-11-05 11:00 | 2h |  | 蔡峰; 陈子卿; 黄为波; 江亮儒; 苏雨豪 | 10h | 280 |
| 29 | 2.1.7 | 项目下达者的访谈 | manual | 1h | 2018-11-14 09:00 | 2018-11-14 10:00 | 2018-11-14 09:00 | 2018-11-14 10:00 | 1h |  | 蔡峰; 陈子卿; 黄为波; 江亮儒; 苏雨豪 | 5h | 140 |
| 30 | 2.1.8 | 绘制关联图 | manual | 2h | 2018-11-12 09:00 | 2018-11-12 11:00 | 2018-11-12 09:00 | 2018-11-12 11:00 | 2h |  | 蔡峰 | 2h | 56 |
| 31 | 2.1.9 | 画用例图 | manual | 1d | 2018-11-09 09:00 | 2018-11-10 09:00 | 2018-11-09 09:00 | 2018-11-10 09:00 | 1d |  | 江亮儒 | 8h | 224 |
| 32 | 2.1.10 | 教师需求第一次访谈 | manual | 1h | 2018-11-06 09:00 | 2018-11-06 10:00 | 2018-11-06 09:00 | 2018-11-06 10:00 | 1h |  | 陈子卿 | 1h | 28 |
| 33 | 2.1.11 | 学生需求第一次访谈 | manual | 1h | 2018-11-06 09:00 | 2018-11-06 10:00 | 2018-11-06 09:00 | 2018-11-06 10:00 | 1h |  | 苏雨豪 | 1h | 28 |
| 34 | 2.1.12 | 游客需求第一次访谈 | manual | 1h | 2018-11-06 09:00 | 2018-11-06 10:00 | 2018-11-06 09:00 | 2018-11-06 10:00 | 1h |  | 蔡峰 | 1h | 28 |
| 35 | 2.1.13 | 第5次会议 | manual | 1h | 2018-11-08 09:00 | 2018-11-08 10:00 | 2018-11-08 09:00 | 2018-11-08 10:00 | 1h |  | 黄为波 | 1h | 28 |
| 36 | 2.1.14 | 更新用例图 | manual | 4h | 2018-11-12 09:00 | 2018-11-12 14:00 | 2018-11-12 09:00 | 2018-11-12 14:00 | 4h |  | 苏雨豪 | 4h | 112 |
| 37 | 2.1.15 | 制作界面原型 | manual | 1d | 2018-11-09 09:00 | 2018-11-10 09:00 | 2018-11-09 09:00 | 2018-11-10 09:00 | 1d |  | 陈子卿 | 8h | 224 |
| 38 | 2.1.16 | 教师需求第二次访谈 | manual | 1h | 2018-11-12 09:00 | 2018-11-12 10:00 | 2018-11-12 09:00 | 2018-11-12 10:00 | 1h |  | 黄为波 | 1h | 28 |
| 39 | 2.1.17 | 学生需求第二次访谈 | manual | 1h | 2018-11-12 09:00 | 2018-11-12 10:00 | 2018-11-12 09:00 | 2018-11-12 10:00 | 1h |  | 江亮儒 | 1h | 28 |
| 40 | 2.1.18 | 游客需求第二次访谈 | manual | 1h | 2018-11-12 09:00 | 2018-11-12 10:00 | 2018-11-12 09:00 | 2018-11-12 10:00 | 1h |  | 苏雨豪 | 1h | 28 |
| 41 | 2.1.19 | 第6次会议 | manual | 2h | 2018-11-13 09:00 | 2018-11-13 11:00 | 2018-11-13 09:00 | 2018-11-13 11:00 | 2h |  | 蔡峰; 陈子卿; 黄为波; 江亮儒; 苏雨豪 | 10h | 280 |
| 42 | 2.1.20 | 更新界面原型 | manual | 5h | 2018-11-14 09:00 | 2018-11-14 15:00 | 2018-11-14 09:00 | 2018-11-14 15:00 | 5h |  | 陈子卿; 黄为波 | 10h | 280 |
| 43 | 2.1.21 | <新任务> | manual | 1d? | 2018-11-05 09:00 | 2018-11-06 09:00 | 2018-11-05 09:00 | 2018-11-06 09:00 | 1d? |  |  |  |  |
| 44 | 2.1.22 | <新任务> | manual | 1d? | 2018-11-05 09:00 | 2018-11-06 09:00 | 2018-11-05 09:00 | 2018-11-06 09:00 | 1d? |  |  |  |  |
| 45 | 2.1.23 | <新任务> | manual | 1d? | 2018-11-05 09:00 | 2018-11-06 09:00 | 2018-11-05 09:00 | 2018-11-06 09:00 | 1d? |  |  |  |  |

| ID | WBS | Task | Type | Duration | Start | Finish | Baseline start | Baseline finish | Baseline duration | Total slack | Resources | Work | Cost |
| --- | --- | --- | --- | --- | --- | --- | --- | --- | --- | --- | --- | --- | --- |
| 46 | 2.2 | **需求分析** |  | 7.44d | 2018-11-15 09:00 | 2018-11-21 10:30 | 2018-11-15 09:00 | 2018-11-21 10:30 | 7.44d | 0d |  | 76.5h | 2,142 |
| 47 | 2.2.1 | 第7次会议 | manual | 1h | 2018-11-15 09:00 | 2018-11-15 10:00 | 2018-11-15 09:00 | 2018-11-15 10:00 | 1h |  | 蔡峰; 陈子卿; 黄为波; 江亮儒; 苏雨豪 | 5h | 140 |
| 48 | 2.2.2 | 创建开发原型 | manual | 3h | 2018-11-15 09:00 | 2018-11-15 12:00 | 2018-11-15 09:00 | 2018-11-15 12:00 | 3h |  | 江亮儒 | 3h | 84 |
| 49 | 2.2.3 | 分析获取需求的可行性 | manual | 3h | 2018-11-16 09:00 | 2018-11-16 12:00 | 2018-11-16 09:00 | 2018-11-16 12:00 | 3h |  | 陈子卿; 黄为波 | 6h | 168 |
| 50 | 2.2.4 | 确定需求的优先级 | manual | 2h | 2018-11-16 09:00 | 2018-11-16 11:00 | 2018-11-16 09:00 | 2018-11-16 11:00 | 2h |  | 蔡峰 | 2h | 56 |
| 51 | 2.2.5 | 需求建模 | manual | 3h | 2018-11-16 09:00 | 2018-11-16 12:00 | 2018-11-16 09:00 | 2018-11-16 12:00 | 3h |  | 苏雨豪 | 3h | 84 |
| 52 | 2.2.6 | 编写数据字典 | manual | 10h | 2018-11-19 09:00 | 2018-11-20 11:00 | 2018-11-19 09:00 | 2018-11-20 11:00 | 10h |  | 蔡峰; 陈子卿; 黄为波; 江亮儒; 苏雨豪 | 50h | 1,400 |
| 53 | 2.2.7 | 第8次会议 | manual | 1.5h | 2018-11-21 09:00 | 2018-11-21 10:30 | 2018-11-21 09:00 | 2018-11-21 10:30 | 1.5h |  | 蔡峰; 陈子卿; 黄为波; 江亮儒; 苏雨豪 | 7.5h | 210 |
| 54 | 2.3 | **需求规范规格** |  | 9.25d | 2018-11-21 09:00 | 2018-11-28 18:00 | 2018-11-21 09:00 | 2018-11-28 18:00 | 9.25d |  |  | 106h | 2,968 |
| 55 | 2.3.1 | 使用需求规格说明书的模版 | manual | 1h | 2018-11-22 09:00 | 2018-11-22 10:00 | 2018-11-22 09:00 | 2018-11-22 10:00 | 1h |  | 蔡峰 | 1h | 28 |
| 56 | 2.3.2 | 确认需求来源 | manual | 2h | 2018-11-22 09:00 | 2018-11-22 11:00 | 2018-11-22 09:00 | 2018-11-22 11:00 | 2h |  | 陈子卿 | 2h | 56 |
| 57 | 2.3.3 | 确定每个需求的唯一标识 | manual | 4h | 2018-11-23 09:00 | 2018-11-23 14:00 | 2018-11-23 09:00 | 2018-11-23 14:00 | 4h |  | 黄为波 | 4h | 112 |
| 58 | 2.3.4 | 记录非功能需求 | manual | 2h | 2018-11-23 09:00 | 2018-11-23 11:00 | 2018-11-23 09:00 | 2018-11-23 11:00 | 2h |  | 江亮儒; 苏雨豪 | 4h | 112 |
| 59 | 2.3.5 | 编写需求规格说明书 | manual | 2d | 2018-11-26 09:00 | 2018-11-28 09:00 | 2018-11-26 09:00 | 2018-11-28 09:00 | 2d |  | 蔡峰; 陈子卿; 黄为波; 江亮儒; 苏雨豪 | 80h | 2,240 |
| 60 | 2.3.6 | 第9次会议 | manual | 3h | 2018-11-28 09:00 | 2018-11-28 12:00 | 2018-11-28 09:00 | 2018-11-28 12:00 | 3h |  | 蔡峰; 陈子卿; 黄为波; 江亮儒; 苏雨豪 | 15h | 420 |
| 61 | 2.4 | **需求规格审核** |  | 7.25d | 2018-11-28 09:00 | 2018-12-03 18:00 | 2018-11-28 09:00 | 2018-12-03 18:00 | 7.25d |  |  | 61h | 1,708 |
| 62 | 2.4.1 | 需求评审 | manual | 8h | 2018-11-29 09:00 | 2018-11-30 09:00 | 2018-11-29 09:00 | 2018-11-30 09:00 | 8h |  | 陈子卿; 黄为波; 江亮儒 | 24h | 672 |
| 63 | 2.4.2 | 确定合格标准 | manual | 4h | 2018-11-29 09:00 | 2018-11-29 14:00 | 2018-11-29 09:00 | 2018-11-29 14:00 | 4h |  | 蔡峰; 苏雨豪 | 8h | 224 |
| 64 | 2.4.3 | 编写用户手册 | manual | 6h | 2018-11-30 09:00 | 2018-11-30 16:00 | 2018-11-30 09:00 | 2018-11-30 16:00 | 6h |  | 蔡峰; 陈子卿 | 12h | 336 |
| 65 | 2.4.4 | 进行需求测试 | manual | 4h | 2018-12-03 09:00 | 2018-12-03 14:00 | 2018-12-03 09:00 | 2018-12-03 14:00 | 4h |  | 黄为波; 江亮儒; 苏雨豪 | 12h | 336 |
| 66 | 2.4.5 | 第10次会议 | manual | 1h | 2018-12-03 09:00 | 2018-12-03 10:00 | 2018-12-03 09:00 | 2018-12-03 10:00 | 1h |  | 蔡峰; 陈子卿; 黄为波; 江亮儒; 苏雨豪 | 5h | 140 |
| 67 | 2.4.6 | <新任务> | manual | 1d? | 2018-11-28 09:00 | 2018-11-29 09:00 | 2018-11-28 09:00 | 2018-11-29 09:00 | 1d? |  |  |  |  |
| 68 | 2.4.7 | <新任务> | manual | 1d | 2018-11-28 09:00 | 2018-11-29 09:00 | 2018-11-28 09:00 | 2018-11-29 09:00 | 1d |  |  |  |  |
| 69 | 3 | **需求管理阶段** |  | 10.25d | 2018-12-05 09:00 | 2018-12-13 18:00 | 2018-12-05 09:00 | 2018-12-13 18:00 | 10.25d |  |  | 134h | 3,752 |
| 70 | 3.1 | 建立需求变更控制过程 | manual | 1d | 2018-12-05 09:00 | 2018-12-06 09:00 | 2018-12-05 09:00 | 2018-12-06 09:00 | 1d |  | 蔡峰 | 8h | 224 |
| 71 | 3.2 | 对需求变更影响分析 | manual | 1d | 2018-12-05 09:00 | 2018-12-06 09:00 | 2018-12-05 09:00 | 2018-12-06 09:00 | 1d |  | 黄为波 | 8h | 224 |
| 72 | 3.3 | 建立基线并控制需求集合版本 | manual | 1d | 2018-12-05 09:00 | 2018-12-06 09:00 | 2018-12-05 09:00 | 2018-12-06 09:00 | 1d |  | 江亮儒 | 8h | 224 |
| 73 | 3.4 | 记录需求变更的历史 | manual | 4h | 2018-12-06 09:00 | 2018-12-06 14:00 | 2018-12-06 09:00 | 2018-12-06 14:00 | 4h |  | 蔡峰 | 4h | 112 |
| 74 | 3.5 | 第11次会议 | manual | 1h | 2018-12-07 09:00 | 2018-12-07 10:00 | 2018-12-07 09:00 | 2018-12-07 10:00 | 1h |  | 蔡峰; 陈子卿; 黄为波; 江亮儒; 苏雨豪 | 5h | 140 |
| 75 | 3.6 | 衡量需求的稳定性 | manual | 1d | 2018-12-07 09:00 | 2018-12-08 09:00 | 2018-12-07 09:00 | 2018-12-08 09:00 | 1d |  | 黄为波 | 8h | 224 |
| 76 | 3.7 | 重新编写测试用例 | manual | 1d | 2018-12-07 09:00 | 2018-12-08 09:00 | 2018-12-07 09:00 | 2018-12-08 09:00 | 1d |  | 江亮儒 | 8h | 224 |
| 77 | 3.8 | 完善界面原型 | manual | 2d | 2018-12-10 09:00 | 2018-12-12 09:00 | 2018-12-10 09:00 | 2018-12-12 09:00 | 2d |  | 陈子卿; 黄为波 | 32h | 896 |
| 78 | 3.9 | 完善用户手册 | manual | 2d | 2018-12-10 09:00 | 2018-12-12 09:00 | 2018-12-10 09:00 | 2018-12-12 09:00 | 2d |  | 蔡峰; 江亮儒 | 32h | 896 |
| 79 | 3.10 | 验证变更 | manual | 2d | 2018-12-10 09:00 | 2018-12-12 09:00 | 2018-12-10 09:00 | 2018-12-12 09:00 | 2d |  | 苏雨豪 | 16h | 448 |
| 80 | 3.11 | 第12次会议 | manual | 1h | 2018-12-13 09:00 | 2018-12-13 10:00 | 2018-12-13 09:00 | 2018-12-13 10:00 | 1h |  | 蔡峰; 陈子卿; 黄为波; 江亮儒; 苏雨豪 | 5h | 140 |
